# Redis项目计划4.0

Schedule from MS Project, 2015-03-18 to 2015-06-17, A marks actual dates.

## Calendars

- 标准: Mon-Fri 08:00-12:00, 13:00-17:00; Sat-Sun off.

## Resources

| Resource |
| --- |
| 陈志伟 |
| 林璐 |
| 王志鹏 |
| 王珊珊 |

## Schedule

| ID | WBS | Task | Type | Duration | Start | Finish | Predecessors | Complete | Actual finish | Baseline start | Baseline finish | Baseline duration | Resources | Work | Actual work |
| --- | --- | --- | --- | --- | --- | --- | --- | --- | --- | --- | --- | --- | --- | --- | --- |
| 1 | 1 | **上第一周课** |  | 8h | 2015-03-18 08:00 A | 2015-03-18 17:00 |  | 100% | 2015-03-18 11:00 | 2015-03-18 08:00 | 2015-03-18 17:00 | 8h |  | 12h | 12h |
| 2 | 1.1 | 组队 | manual | 1h | 2015-03-18 08:00 A | 2015-03-18 09:00 A |  | 100% |  | 2015-03-18 08:00 | 2015-03-18 09:00 | 1h | 陈志伟; 林璐; 王珊珊; 王志鹏 | 4h | 4h |
| 3 | 1.2 | 分配开源软件调研任务 | manual | 2h | 2015-03-18 09:00 A | 2015-03-18 11:00 A | 2 | 100% |  | 2015-03-18 09:00 | 2015-03-18 11:00 | 2h | 陈志伟; 林璐; 王珊珊; 王志鹏 | 8h | 8h |
| 4 | 2 | **查找资料** |  | 16h | 2015-03-19 08:00 A | 2015-03-20 17:00 A |  | 100% |  | 2015-03-19 08:00 | 2015-03-20 17:00 | 16h |  | 48h | 48h |
| 5 | 2.1 | 调研Python | manual | 16h | 2015-03-19 08:00 A | 2015-03-20 17:00 A | 3 | 100% |  | 2015-03-19 08:00 | 2015-03-20 17:00 | 16h | 陈志伟 | 16h | 16h |
| 6 | 2.2 | 调研Spark | manual | 16h | 2015-03-19 08:00 A | 2015-03-20 17:00 A | 3 | 100% |  | 2015-03-19 08:00 | 2015-03-20 17:00 | 16h | 林璐 | 16h | 16h |
| 7 | 2.3 | 调研Redis | manual | 16h | 2015-03-19 08:00 A | 2015-03-20 17:00 A | 3 | 100% |  | 2015-03-19 08:00 | 2015-03-20 17:00 | 16h | 王志鹏 | 16h | 16h |
| 8 | 3 | 小组第一次会议 | manual | 4h | 2015-03-23 08:00 A | 2015-03-23 12:00 A | 4 | 100% |  | 2015-03-23 08:00 | 2015-03-23 12:00 | 4h | 陈志伟; 林璐; 王珊珊; 王志鹏 | 16h | 16h |
| 9 | 4 | 制作ppt | manual | 2h | 2015-03-24 08:00 A | 2015-03-24 10:00 A | 7, 8 | 100% |  | 2015-03-24 08:00 | 2015-03-24 10:00 | 2h | 林璐 | 2h | 2h |
| 10 | 5 | **上第二周课** |  | 8h | 2015-03-25 08:00 A | 2015-03-25 17:00 |  | 100% | 2015-03-25 13:30 | 2015-03-25 08:00 | 2015-03-25 17:00 | 8h |  | 6h | 6h |
| 11 | 5.1 | 课堂ppt演讲 | manual | 2h | 2015-03-25 08:00 A | 2015-03-25 10:00 A | 9 | 100% |  | 2015-03-25 08:00 | 2015-03-25 10:00 | 2h | 林璐 | 2h | 2h |
| 12 | 5.2 | 答辩 | manual | 0.5h | 2015-03-25 10:00 A | 2015-03-25 10:30 A | 11 | 100% |  | 2015-03-25 10:00 | 2015-03-25 10:30 | 0.5h | 陈志伟; 林璐; 王珊珊; 王志鹏 | 2h | 2h |
| 13 | 5.3 | 整理评审意见 | manual | 2h | 2015-03-25 10:30 A | 2015-03-25 13:30 A | 12 | 100% |  | 2015-03-25 10:30 | 2015-03-25 13:30 | 2h | 王珊珊 | 2h | 2h |
| 14 | 6 | **项目计划书** |  | 8h | 2015-03-26 08:00 A | 2015-03-26 17:00 A |  | 100% |  | 2015-03-26 08:00 | 2015-03-26 17:00 | 8h |  | 20h | 20h |
| 15 | 6.1 | 制作服务器模块的进度表 | manual | 4h | 2015-03-26 08:00 A | 2015-03-26 12:00 A | 10 | 100% |  | 2015-03-26 08:00 | 2015-03-26 12:00 | 4h | 陈志伟 | 4h | 4h |
| 16 | 6.2 | 制作RDB持久化模块的进度表 | manual | 4h | 2015-03-26 08:00 A | 2015-03-26 12:00 A | 10 | 100% |  | 2015-03-26 08:00 | 2015-03-26 12:00 | 4h | 林璐 | 4h | 4h |
| 17 | 6.3 | 制作客户端模块的进度表 | manual | 4h | 2015-03-26 08:00 A | 2015-03-26 12:00 A | 10 | 100% |  | 2015-03-26 08:00 | 2015-03-26 12:00 | 4h | 王志鹏 | 4h | 4h |
| 18 | 6.4 | 制作AOF持久化模块的进度表 | manual | 4h | 2015-03-26 08:00 A | 2015-03-26 12:00 A | 10 | 100% |  | 2015-03-26 08:00 | 2015-03-26 12:00 | 4h | 王珊珊 | 4h | 4h |
| 19 | 6.5 | 汇总并制作项目计划书 | manual | 4h | 2015-03-26 08:00 A | 2015-03-26 17:00 A | 15, 16, 17, 18 | 100% |  | 2015-03-26 08:00 | 2015-03-26 17:00 | 4h | 陈志伟 | 4h | 4h |
| 20 | 7 | **需求准备** |  | 8h | 2015-03-27 08:00 A | 2015-03-27 17:00 |  | 100% | 2015-03-27 11:00 | 2015-03-27 08:00 | 2015-03-27 17:00 | 8h |  | 29h | 29h |
| 21 | 7.1 | 学习RUCM知识 | manual | 3h | 2015-03-27 08:00 A | 2015-03-27 11:00 A |  | 100% |  | 2015-03-27 08:00 | 2015-03-27 11:00 | 3h | 陈志伟; 林璐; 王珊珊; 王志鹏 | 12h | 12h |
| 22 | 7.2 | 学习UML知识 | manual | 2h | 2015-03-27 08:00 A | 2015-03-27 10:00 A |  | 100% |  | 2015-03-27 08:00 | 2015-03-27 10:00 | 2h | 陈志伟; 林璐; 王珊珊; 王志鹏 | 8h | 8h |
| 23 | 7.3 | 学习RUCM和RSA软件的使用 | manual | 3h | 2015-03-27 08:00 A | 2015-03-27 11:00 A |  | 100% |  | 2015-03-27 08:00 | 2015-03-27 11:00 | 3h | 林璐; 王珊珊; 王志鹏 | 9h | 9h |
| 24 | 8 | 项目管理第一阶段 | manual | 3h | 2015-03-27 08:00 A | 2015-03-27 11:00 A |  | 100% |  | 2015-03-27 08:00 | 2015-03-27 11:00 | 3h | 陈志伟 | 3h | 3h |

| ID | WBS | Task | Type | Duration | Start | Finish | Predecessors | Complete | Actual finish | Baseline start | Baseline finish | Baseline duration | Resources | Work | Actual work |
| --- | --- | --- | --- | --- | --- | --- | --- | --- | --- | --- | --- | --- | --- | --- | --- |
| 25 | 9 | **RUCM、UML建模及相应的产出物** |  | 16h | 2015-03-28 08:00 A | 2015-03-30 17:00 A |  | 100% |  | 2015-03-28 08:00 | 2015-03-30 17:00 | 16h |  | 64h | 64h |
| 26 | 9.1 | 服务器模块 | manual | 16h | 2015-03-28 08:00 A | 2015-03-30 17:00 A | 20 | 100% |  | 2015-03-28 08:00 | 2015-03-30 17:00 | 16h | 陈志伟 | 16h | 16h |
| 27 | 9.2 | RDB持久化模块 | manual | 16h | 2015-03-28 08:00 A | 2015-03-30 17:00 A | 20 | 100% |  | 2015-03-28 08:00 | 2015-03-30 17:00 | 16h | 林璐 | 16h | 16h |
| 28 | 9.3 | 客户端模块 | manual | 16h | 2015-03-28 08:00 A | 2015-03-30 17:00 A | 20 | 100% |  | 2015-03-28 08:00 | 2015-03-30 17:00 | 16h | 王志鹏 | 16h | 16h |
| 29 | 9.4 | AOF持久化模块 | manual | 16h | 2015-03-28 08:00 A | 2015-03-30 17:00 A | 20 | 100% |  | 2015-03-28 08:00 | 2015-03-30 17:00 | 16h | 王珊珊 | 16h | 16h |
| 30 | 10 | **撰写需求分析报告初稿** |  | 16h | 2015-03-31 08:00 A | 2015-04-01 17:00 |  | 100% | 2015-04-01 15:00 | 2015-03-31 08:00 | 2015-04-01 17:00 | 16h |  | 28h | 28h |
| 31 | 10.1 | 撰写服务器模块初稿 | manual | 4h | 2015-03-31 08:00 A | 2015-03-31 12:00 A | 26 | 100% |  | 2015-03-31 08:00 | 2015-03-31 12:00 | 4h | 陈志伟 | 4h | 4h |
| 32 | 10.2 | 撰写RDB持久化模块初稿 | manual | 4h | 2015-03-31 08:00 A | 2015-03-31 12:00 A | 27 | 100% |  | 2015-03-31 08:00 | 2015-03-31 12:00 | 4h | 林璐 | 4h | 4h |
| 33 | 10.3 | 撰写客户端模块初稿 | manual | 4h | 2015-03-31 08:00 A | 2015-03-31 12:00 A | 28 | 100% |  | 2015-03-31 08:00 | 2015-03-31 12:00 | 4h | 王志鹏 | 4h | 4h |
| 34 | 10.4 | 撰写AOF持久化模块初稿 | manual | 4h | 2015-03-31 08:00 A | 2015-03-31 12:00 A | 29 | 100% |  | 2015-03-31 08:00 | 2015-03-31 12:00 | 4h | 王珊珊 | 4h | 4h |
| 35 | 10.5 | 汇总需求分析报告初稿 | manual | 4h | 2015-03-31 08:00 A | 2015-03-31 12:00 A |  | 100% |  | 2015-03-31 08:00 | 2015-03-31 12:00 | 4h | 陈志伟; 王珊珊 | 8h | 8h |
| 36 | 10.6 | 审查需求分析报告初稿 | manual | 2h | 2015-04-01 13:00 A | 2015-04-01 15:00 A | 35 | 100% |  | 2015-04-01 13:00 | 2015-04-01 15:00 | 2h | 林璐; 王志鹏 | 4h | 4h |
| 37 | 11 | **需求分析初稿评审** |  | 8h | 2015-04-01 08:00 A | 2015-04-01 17:00 |  | 100% | 2015-04-01 10:30 | 2015-04-01 08:00 | 2015-04-01 17:00 | 8h |  | 5h | 5h |
| 38 | 11.1 | 课堂ppt演讲 | manual | 2h | 2015-04-01 08:00 A | 2015-04-01 10:00 A | 30 | 100% |  | 2015-04-01 08:00 | 2015-04-01 10:00 | 2h | 林璐 | 2h | 2h |
| 39 | 11.2 | 答辩 | manual | 0.5h | 2015-04-01 09:00 A | 2015-04-01 09:30 A | 38 | 100% |  | 2015-04-01 09:00 | 2015-04-01 09:30 | 0.5h | 陈志伟; 林璐; 王珊珊; 王志鹏 | 2h | 2h |
| 40 | 11.3 | 整理评审意见 | manual | 1h | 2015-04-01 09:30 A | 2015-04-01 10:30 A | 39 | 100% |  | 2015-04-01 09:30 | 2015-04-01 10:30 | 1h | 王珊珊 | 1h | 1h |
| 41 | 12 | **小组会议** |  | 8h | 2015-04-02 08:00 A | 2015-04-02 17:00 |  | 100% | 2015-04-02 13:30 | 2015-04-02 08:00 | 2015-04-02 17:00 | 8h |  | 16.5h | 16.5h |
| 42 | 12.1 | 根据评审意见，形成修改计划 | manual | 4h | 2015-04-02 08:00 A | 2015-04-02 12:00 A | 37 | 100% |  | 2015-04-02 08:00 | 2015-04-02 12:00 | 4h | 陈志伟; 林璐; 王珊珊; 王志鹏 | 16h | 16h |
| 43 | 12.2 | 会议记录 | manual | 0.5h | 2015-04-02 13:00 A | 2015-04-02 13:30 A | 42 | 100% |  | 2015-04-02 13:00 | 2015-04-02 13:30 | 0.5h | 王志鹏 | 0.5h | 0.5h |
| 44 | 13 | 项目管理第二阶段 | manual | 3h | 2015-04-02 08:00 A | 2015-04-02 11:00 A |  | 100% |  | 2015-04-02 08:00 | 2015-04-02 11:00 | 3h | 陈志伟 | 3h | 3h |
| 45 | 14 | **撰写正式版需求分析报告** |  | 16h | 2015-04-03 08:00 A | 2015-04-05 17:00 |  | 100% | 2015-04-06 17:00 | 2015-04-03 08:00 | 2015-04-05 17:00 | 16h |  | 36h | 36h |
| 46 | 14.1 | 报告撰写 | manual | 8h | 2015-04-03 08:00 A | 2015-04-03 17:00 | 42 | 100% | 2015-04-06 17:00 | 2015-04-03 08:00 | 2015-04-06 17:00 | 8h | 陈志伟; 林璐; 王珊珊; 王志鹏 | 32h | 32h |
| 47 | 14.2 | 报告审查 | manual | 4h | 2015-04-05 08:00 A | 2015-04-05 12:00 A | 46 | 100% |  | 2015-04-05 08:00 | 2015-04-05 12:00 | 4h | 陈志伟 | 4h | 4h |
| 48 | 15 | 制作评审单 | manual | 4h | 2015-04-06 08:00 A | 2015-04-06 12:00 A | 45 | 100% |  | 2015-04-06 08:00 | 2015-04-06 12:00 | 4h | 林璐 | 4h | 4h |
| 49 | 16 | 需求网络互评审 | manual | 4h | 2015-04-06 08:00 | 2015-04-06 12:00 | 45 |  |  | 2015-04-06 08:00 | 2015-04-06 12:00 | 4h | 陈志伟; 林璐; 王珊珊; 王志鹏 | 16h |  |

Notes:
- 49: 未完成的原因是因为经过了第一次的评审，第二次由于知识有限无法找到缺陷；且其他同学也未评审！

| ID | WBS | Task | Type | Duration | Start | Finish | Predecessors | Complete | Remaining | Actual start | Actual finish | Baseline start | Baseline finish | Baseline duration | Resources | Work | Actual work |
| --- | --- | --- | --- | --- | --- | --- | --- | --- | --- | --- | --- | --- | --- | --- | --- | --- | --- |
| 50 | 17 | **需求报告最终评审** |  | 8h | 2015-04-08 08:00 A | 2015-04-08 17:00 |  | 100% |  |  | 2015-04-08 11:30 | 2015-04-08 08:00 | 2015-04-08 17:00 | 8h |  | 7h | 7h |
| 51 | 17.1 | ppt演讲 | manual | 2h | 2015-04-08 08:00 A | 2015-04-08 10:00 A | 45, 49 | 100% |  |  |  | 2015-04-08 08:00 | 2015-04-08 10:00 | 2h | 林璐; 王志鹏 | 4h | 4h |
| 52 | 17.2 | 答辩 | manual | 0.5h | 2015-04-08 10:00 A | 2015-04-08 10:30 A | 51 | 100% |  |  |  | 2015-04-08 10:00 | 2015-04-08 10:30 | 0.5h | 陈志伟; 林璐; 王珊珊; 王志鹏 | 2h | 2h |
| 53 | 17.3 | 整理评审意见 | manual | 1h | 2015-04-08 10:30 A | 2015-04-08 11:30 A | 51, 52 | 100% |  |  |  | 2015-04-08 10:30 | 2015-04-08 11:30 | 1h | 王珊珊 | 1h | 1h |
| 54 | 18 | **小组会议** |  | 8h | 2015-04-09 08:00 A | 2015-04-09 17:00 |  | 100% |  |  | 2015-04-09 11:00 | 2015-04-09 08:00 | 2015-04-09 17:00 | 8h |  | 12.5h | 12.5h |
| 55 | 18.1 | 根据评审意见，形成修改计划 | manual | 3h | 2015-04-09 08:00 A | 2015-04-09 11:00 A | 50 | 100% |  |  |  | 2015-04-09 08:00 | 2015-04-09 11:00 | 3h | 陈志伟; 林璐; 王珊珊; 王志鹏 | 12h | 12h |
| 56 | 18.2 | 会议记录 | manual | 0.5h | 2015-04-09 08:00 A | 2015-04-09 08:30 A | 50 | 100% |  |  |  | 2015-04-09 08:00 | 2015-04-09 08:30 | 0.5h | 王珊珊 | 0.5h | 0.5h |
| 57 | 19 | **撰写最终版需求分析报告** |  | 24h | 2015-04-10 08:00 A | 2015-04-14 17:00 |  | 100% |  |  | 2015-04-14 12:00 | 2015-04-10 08:00 | 2015-04-14 17:00 | 24h |  | 44h | 44h |
| 58 | 19.1 | 报告修改 | manual | 10h | 2015-04-10 08:00 A | 2015-04-13 10:00 A | 54 | 100% |  |  |  | 2015-04-10 08:00 | 2015-04-13 10:00 | 10h | 陈志伟; 林璐; 王珊珊; 王志鹏 | 40h | 40h |
| 59 | 19.2 | 报告审查 | manual | 4h | 2015-04-14 08:00 A | 2015-04-14 12:00 A | 58 | 100% |  |  |  | 2015-04-14 08:00 | 2015-04-14 12:00 | 4h | 陈志伟 | 4h | 4h |
| 60 | 20 | 项目管理第三阶段 | manual | 3h | 2015-04-14 08:00 A | 2015-04-14 11:00 A |  | 100% |  |  |  | 2015-04-14 08:00 | 2015-04-14 11:00 | 3h | 陈志伟 | 3h | 3h |
| 61 | 21 | **软件项目进度控制与任务协调** |  | 24h | 2015-04-15 08:00 A | 2015-04-17 17:00 |  | 70% | 7.2h |  |  | 2015-04-15 08:00 | 2015-04-17 17:00 | 24h |  | 80h | 55.99h |
| 62 | 21.1 | 使用Microsoft Project | manual | 16h | 2015-04-15 08:00 A | 2015-04-16 17:00 |  | 87% | 2h |  |  | 2015-04-15 08:00 | 2015-04-16 17:00 | 16h | 陈志伟; 王珊珊 | 32h | 28h |
| 63 | 21.2 | 小组协调 | manual | 24h | 2015-04-15 08:00 A | 2015-04-17 17:00 |  | 58% | 10h |  |  | 2015-04-15 08:00 | 2015-04-17 17:00 | 24h | 林璐; 王志鹏 | 48h | 28h |
| 64 | 22 | **软件变更控制和版本管理** |  | 16h | 2015-04-18 08:00 | 2015-04-20 17:00 |  | 90% | 1.6h | 2015-04-20 08:00 |  | 2015-04-18 08:00 | 2015-04-20 17:00 | 16h |  | 16h | 14.4h |
| 65 | 22.1 | 使用SVM和GitHub工具形成变更与管理分 | manual | 3h | 2015-04-20 08:00 A | 2015-04-20 11:00 A | 61 | 100% |  |  |  | 2015-04-20 08:00 | 2015-04-20 11:00 | 3h | 陈志伟; 王珊珊 | 6h | 6h |
| 66 | 22.2 | 撰写变更与管理分析报告 | manual | 5h | 2015-04-20 08:00 A | 2015-04-20 14:00 | 61 | 84% | 0.8h |  |  | 2015-04-20 08:00 | 2015-04-20 14:00 | 5h | 林璐; 王志鹏 | 10h | 8.4h |
| 67 | 23 | 学习测试基本知识 | manual | 8h | 2015-04-21 08:00 | 2015-04-21 17:00 |  |  |  |  |  | 2015-04-21 08:00 | 2015-04-21 17:00 | 8h | 陈志伟; 林璐; 王珊珊; 王志鹏 | 32h |  |
| 68 | 24 | **小组会议** |  | 8h | 2015-04-22 08:00 A | 2015-04-22 17:00 |  | 100% |  |  | 2015-04-22 12:00 | 2015-04-22 08:00 | 2015-04-22 17:00 | 8h |  | 16.5h | 16.5h |
| 69 | 24.1 | 小组讨论测试策略 | manual | 4h | 2015-04-22 08:00 A | 2015-04-22 12:00 A | 67 | 100% |  |  |  | 2015-04-22 08:00 | 2015-04-22 12:00 | 4h | 陈志伟; 林璐; 王珊珊; 王志鹏 | 16h | 16h |
| 70 | 24.2 | 会议记录 | manual | 0.5h | 2015-04-22 08:00 A | 2015-04-22 08:30 A | 67 | 100% |  |  |  | 2015-04-22 08:00 | 2015-04-22 08:30 | 0.5h | 王志鹏 | 0.5h | 0.5h |
| 71 | 25 | 项目管理第四阶段 | manual | 3h | 2015-04-22 08:00 | 2015-04-22 11:00 |  |  |  |  |  | 2015-04-22 08:00 | 2015-04-22 11:00 | 3h | 陈志伟 | 3h |  |
| 72 | 26 | **测试用例设计** |  | 16h | 2015-04-23 08:00 A | 2015-04-24 17:00 A |  | 100% |  |  |  | 2015-04-23 08:00 | 2015-04-24 17:00 | 16h |  | 64h | 64h |
| 73 | 26.1 | 设计服务器模块模块的测试用例 | manual | 8h | 2015-04-23 08:00 A | 2015-04-23 17:00 A | 67, 68 | 100% |  |  |  | 2015-04-23 08:00 | 2015-04-23 17:00 | 8h | 陈志伟 | 8h | 8h |
| 74 | 26.2 | 设计RDB持久化模块的测试用例 | manual | 8h | 2015-04-23 08:00 A | 2015-04-23 17:00 A | 67, 68 | 100% |  |  |  | 2015-04-23 08:00 | 2015-04-23 17:00 | 8h | 林璐 | 8h | 8h |
| 75 | 26.3 | 设计客户端模块的测试用例 | manual | 8h | 2015-04-23 08:00 A | 2015-04-23 17:00 A | 67, 68 | 100% |  |  |  | 2015-04-23 08:00 | 2015-04-23 17:00 | 8h | 王志鹏 | 8h | 8h |
| 76 | 26.4 | 设计AOF持久化模块的测试用例 | manual | 8h | 2015-04-23 08:00 A | 2015-04-23 17:00 A | 67, 68 | 100% |  |  |  | 2015-04-23 08:00 | 2015-04-23 17:00 | 8h | 王珊珊 | 8h | 8h |
| 77 | 26.5 | 测试用例汇总 | manual | 8h | 2015-04-24 08:00 A | 2015-04-24 17:00 A |  | 100% |  |  |  | 2015-04-24 08:00 | 2015-04-24 17:00 | 8h | 陈志伟; 林璐; 王珊珊; 王志鹏 | 32h | 32h |

| ID | WBS | Task | Type | Duration | Start | Finish | Predecessors | Complete | Actual start | Actual finish | Baseline start | Baseline finish | Baseline duration | Resources | Work | Actual work |
| --- | --- | --- | --- | --- | --- | --- | --- | --- | --- | --- | --- | --- | --- | --- | --- | --- |
| 78 | 27 | **撰写测试分析报告初稿** |  | 24h | 2015-04-25 08:00 | 2015-04-28 17:00 |  | 100% | 2015-04-27 08:00 | 2015-04-28 12:00 | 2015-04-25 08:00 | 2015-04-28 17:00 | 24h |  | 36h | 36h |
| 79 | 27.1 | 报告书写 | manual | 8h | 2015-04-27 08:00 A | 2015-04-27 17:00 A | 72 | 100% |  |  | 2015-04-27 08:00 | 2015-04-27 17:00 | 8h | 陈志伟; 林璐; 王珊珊; 王志鹏 | 32h | 32h |
| 80 | 27.2 | 报告审查 | manual | 4h | 2015-04-28 08:00 A | 2015-04-28 12:00 A | 79 | 100% |  |  | 2015-04-28 08:00 | 2015-04-28 12:00 | 4h | 陈志伟 | 4h | 4h |
| 81 | 28 | **测试分析初稿评审** |  | 8h | 2015-04-29 08:00 A | 2015-04-29 17:00 |  | 100% |  | 2015-04-29 11:30 | 2015-04-29 08:00 | 2015-04-29 17:00 | 8h |  | 7h | 7h |
| 82 | 28.1 | ppt演讲 | manual | 2h | 2015-04-29 08:00 A | 2015-04-29 10:00 A | 78 | 100% |  |  | 2015-04-29 08:00 | 2015-04-29 10:00 | 2h | 林璐; 王志鹏 | 4h | 4h |
| 83 | 28.2 | 答辩 | manual | 0.5h | 2015-04-29 10:00 A | 2015-04-29 10:30 A | 82 | 100% |  |  | 2015-04-29 10:00 | 2015-04-29 10:30 | 0.5h | 陈志伟; 林璐; 王珊珊; 王志鹏 | 2h | 2h |
| 84 | 28.3 | 整理评审意见 | manual | 1h | 2015-04-29 10:30 A | 2015-04-29 11:30 A | 83 | 100% |  |  | 2015-04-29 10:30 | 2015-04-29 11:30 | 1h | 王珊珊 | 1h | 1h |
| 85 | 29 | **小组会议** |  | 8h | 2015-04-30 08:00 A | 2015-04-30 17:00 |  | 100% |  | 2015-04-30 13:30 | 2015-04-30 08:00 | 2015-04-30 17:00 | 8h |  | 16.5h | 16.5h |
| 86 | 29.1 | 根据评审意见，形成修改计划 | manual | 4h | 2015-04-30 08:00 A | 2015-04-30 12:00 A | 81 | 100% |  |  | 2015-04-30 08:00 | 2015-04-30 12:00 | 4h | 陈志伟; 林璐; 王珊珊; 王志鹏 | 16h | 16h |
| 87 | 29.2 | 会议记录 | manual | 0.5h | 2015-04-30 13:00 A | 2015-04-30 13:30 A | 86 | 100% |  |  | 2015-04-30 13:00 | 2015-04-30 13:30 | 0.5h | 王珊珊 | 0.5h | 0.5h |
| 88 | 30 | **撰写正式版测试分析报告** |  | 24h | 2015-05-01 08:00 A | 2015-05-05 17:00 A |  | 100% |  |  | 2015-05-01 08:00 | 2015-05-05 17:00 | 24h |  | 72h | 72h |
| 89 | 30.1 | 报告撰写 | manual | 16h | 2015-05-01 08:00 A | 2015-05-04 17:00 A | 81, 85 | 100% |  |  | 2015-05-01 08:00 | 2015-05-04 17:00 | 16h | 陈志伟; 林璐; 王珊珊; 王志鹏 | 64h | 64h |
| 90 | 30.2 | 报告审查 | manual | 8h | 2015-05-05 08:00 A | 2015-05-05 17:00 A | 89 | 100% |  |  | 2015-05-05 08:00 | 2015-05-05 17:00 | 8h | 陈志伟 | 8h | 8h |
| 91 | 31 | **测试分析正式稿评审** |  | 8h | 2015-05-06 08:00 A | 2015-05-06 17:00 |  | 100% |  | 2015-05-06 10:00 | 2015-05-06 08:00 | 2015-05-06 17:00 | 8h |  | 7h | 7h |
| 92 | 31.1 | ppt演讲 | manual | 2h | 2015-05-06 08:00 A | 2015-05-06 10:00 A | 88 | 100% |  |  | 2015-05-06 08:00 | 2015-05-06 10:00 | 2h | 林璐; 王志鹏 | 4h | 4h |
| 93 | 31.2 | 答辩 | manual | 0.5h | 2015-05-06 08:00 A | 2015-05-06 08:30 A | 88 | 100% |  |  | 2015-05-06 08:00 | 2015-05-06 08:30 | 0.5h | 陈志伟; 林璐; 王珊珊; 王志鹏 | 2h | 2h |
| 94 | 31.3 | 整理评审意见 | manual | 1h | 2015-05-06 08:30 A | 2015-05-06 09:30 A | 93 | 100% |  |  | 2015-05-06 08:30 | 2015-05-06 09:30 | 1h | 王珊珊 | 1h | 1h |
| 95 | 32 | 测试分析终稿定稿 | manual | 16h | 2015-05-07 08:00 | 2015-05-08 17:00 | 88, 91 |  |  |  | 2015-05-07 08:00 | 2015-05-08 17:00 | 16h | 陈志伟; 林璐; 王珊珊; 王志鹏 | 64h |  |
| 96 | 33 | **测试代码编写** |  | 24h | 2015-05-09 08:00 | 2015-05-12 17:00 A |  | 100% | 2015-05-11 08:00 |  | 2015-05-09 08:00 | 2015-05-12 17:00 | 24h |  | 64h | 64h |
| 97 | 33.1 | Redis的启动、运行模块 | manual | 16h | 2015-05-11 08:00 A | 2015-05-12 17:00 A | 72, 95 | 100% |  |  | 2015-05-11 08:00 | 2015-05-12 17:00 | 16h | 陈志伟 | 16h | 16h |
| 98 | 33.2 | RDB持久化模块 | manual | 16h | 2015-05-11 08:00 A | 2015-05-12 17:00 A | 72, 95 | 100% |  |  | 2015-05-11 08:00 | 2015-05-12 17:00 | 16h | 林璐 | 16h | 16h |
| 99 | 33.3 | 客户端模块 | manual | 16h | 2015-05-11 08:00 A | 2015-05-12 17:00 A | 72, 95 | 100% |  |  | 2015-05-11 08:00 | 2015-05-12 17:00 | 16h | 王志鹏 | 16h | 16h |
| 100 | 33.4 | AOF持久化模块 | manual | 16h | 2015-05-11 08:00 A | 2015-05-12 17:00 A | 72, 95 | 100% |  |  | 2015-05-11 08:00 | 2015-05-12 17:00 | 16h | 王珊珊 | 16h | 16h |
| 101 | 34 | **软件测试** |  | 32h | 2015-05-13 08:00 A | 2015-05-17 17:00 |  | 100% |  | 2015-05-15 12:00 | 2015-05-13 08:00 | 2015-05-17 17:00 | 32h |  | 80h | 80h |
| 102 | 34.1 | 进行测试 | manual | 8h | 2015-05-13 08:00 A | 2015-05-13 17:00 A | 96 | 100% |  |  | 2015-05-13 08:00 | 2015-05-13 17:00 | 8h | 陈志伟; 林璐; 王珊珊; 王志鹏 | 32h | 32h |
| 103 | 34.2 | 测试结果分析 | manual | 8h | 2015-05-14 08:00 A | 2015-05-14 17:00 A | 96 | 100% |  |  | 2015-05-14 08:00 | 2015-05-14 17:00 | 8h | 陈志伟; 林璐; 王珊珊; 王志鹏 | 32h | 32h |
| 104 | 34.3 | 汇总并整理测试用例和代码 | manual | 4h | 2015-05-15 08:00 A | 2015-05-15 12:00 A | 96 | 100% |  |  | 2015-05-15 08:00 | 2015-05-15 12:00 | 4h | 陈志伟; 林璐; 王珊珊; 王志鹏 | 16h | 16h |

| ID | WBS | Task | Type | Duration | Start | Finish | Predecessors | Baseline start | Baseline finish | Baseline duration | Resources | Work |
| --- | --- | --- | --- | --- | --- | --- | --- | --- | --- | --- | --- | --- |
| 105 | 35 | **小组会议** |  | 6h | 2015-05-18 08:00 | 2015-05-18 15:00 |  | 2015-05-18 08:00 | 2015-05-18 15:00 | 6h |  | 17h |
| 106 | 35.1 | 选择不同的软件应用场景并分工 | manual | 4h | 2015-05-18 08:00 | 2015-05-18 12:00 |  | 2015-05-18 08:00 | 2015-05-18 12:00 | 4h | 陈志伟; 林璐; 王珊珊; 王志鹏 | 16h |
| 107 | 35.2 | 会议记录 | manual | 1h | 2015-05-18 08:00 | 2015-05-18 09:00 |  | 2015-05-18 08:00 | 2015-05-18 09:00 | 1h | 陈志伟 | 1h |
| 108 | 36 | 调研产品典型应用场景 | manual | 8h | 2015-05-19 08:00 | 2015-05-19 17:00 | 106 | 2015-05-19 08:00 | 2015-05-19 17:00 | 8h | 陈志伟; 林璐; 王珊珊; 王志鹏 | 32h |
| 109 | 37 | **小组会议** |  | 6h | 2015-05-20 08:00 | 2015-05-20 15:00 |  | 2015-05-20 08:00 | 2015-05-20 15:00 | 6h |  | 16.5h |
| 110 | 37.1 | 调研结果汇总 | manual | 4h | 2015-05-20 08:00 | 2015-05-20 12:00 | 108 | 2015-05-20 08:00 | 2015-05-20 12:00 | 4h | 陈志伟; 林璐; 王珊珊; 王志鹏 | 16h |
| 111 | 37.2 | 会议记录 | manual | 0.5h | 2015-05-20 08:00 | 2015-05-20 08:30 | 108 | 2015-05-20 08:00 | 2015-05-20 08:30 | 0.5h | 王珊珊 | 0.5h |
| 112 | 38 | **撰写产品更新与展示需求分析报告** |  | 32h | 2015-05-21 08:00 | 2015-05-26 17:00 |  | 2015-05-21 08:00 | 2015-05-26 17:00 | 32h |  | 88h |
| 113 | 38.1 | 撰写服务器模块的报告 | manual | 16h | 2015-05-21 08:00 | 2015-05-22 17:00 | 109 | 2015-05-21 08:00 | 2015-05-22 17:00 | 16h | 陈志伟 | 16h |
| 114 | 38.2 | 撰写RDB持久化模块的报告 | manual | 16h | 2015-05-21 08:00 | 2015-05-22 17:00 | 109 | 2015-05-21 08:00 | 2015-05-22 17:00 | 16h | 林璐 | 16h |
| 115 | 38.3 | 撰写客户端模块的报告 | manual | 16h | 2015-05-21 08:00 | 2015-05-22 17:00 | 109 | 2015-05-21 08:00 | 2015-05-22 17:00 | 16h | 王志鹏 | 16h |
| 116 | 38.4 | 撰写AOF持久化模块 | manual | 16h | 2015-05-21 08:00 | 2015-05-22 17:00 | 109 | 2015-05-21 08:00 | 2015-05-22 17:00 | 16h | 王珊珊 | 16h |
| 117 | 38.5 | 汇总报告 | manual | 8h | 2015-05-25 08:00 | 2015-05-25 17:00 |  | 2015-05-25 08:00 | 2015-05-25 17:00 | 8h | 林璐; 王志鹏 | 16h |
| 118 | 38.6 | 审查报告 | manual | 4h | 2015-05-26 08:00 | 2015-05-26 12:00 | 117 | 2015-05-26 08:00 | 2015-05-26 12:00 | 4h | 陈志伟; 王珊珊 | 8h |
| 119 | 39 | **撰写测试分析报告** |  | 40h | 2015-05-27 08:00 | 2015-06-02 17:00 |  | 2015-05-27 08:00 | 2015-06-02 17:00 | 40h |  | 116h |
| 120 | 39.1 | 讨论测试策略 | manual | 4h | 2015-05-27 08:00 | 2015-05-27 12:00 |  | 2015-05-27 08:00 | 2015-05-27 12:00 | 4h | 陈志伟; 林璐; 王珊珊; 王志鹏 | 16h |
| 121 | 39.2 | 设计测试用例 | manual | 16h | 2015-05-28 08:00 | 2015-05-29 17:00 | 120 | 2015-05-28 08:00 | 2015-05-29 17:00 | 16h | 陈志伟; 林璐; 王珊珊; 王志鹏 | 64h |
| 122 | 39.3 | 汇总并撰写测试报告 | manual | 8h | 2015-06-01 08:00 | 2015-06-01 17:00 | 121 | 2015-06-01 08:00 | 2015-06-01 17:00 | 8h | 陈志伟; 林璐; 王珊珊; 王志鹏 | 32h |
| 123 | 39.4 | 审查报告 | manual | 4h | 2015-06-02 08:00 | 2015-06-02 12:00 |  | 2015-06-02 08:00 | 2015-06-02 12:00 | 4h | 陈志伟 | 4h |
| 124 | 40 | **软件演示** |  | 48h | 2015-06-03 08:00 | 2015-06-10 17:00 |  | 2015-06-03 08:00 | 2015-06-10 17:00 | 48h |  | 176h |
| 125 | 40.1 | 编写测试代码 | manual | 24h | 2015-06-03 08:00 | 2015-06-05 17:00 | 119 | 2015-06-03 08:00 | 2015-06-05 17:00 | 24h | 陈志伟; 林璐; 王珊珊; 王志鹏 | 96h |
| 126 | 40.2 | 进行测试 | manual | 16h | 2015-06-08 08:00 | 2015-06-09 17:00 | 125 | 2015-06-08 08:00 | 2015-06-09 17:00 | 16h | 陈志伟; 林璐; 王珊珊; 王志鹏 | 64h |
| 127 | 40.3 | 测试演示 | manual | 4h | 2015-06-10 08:00 | 2015-06-10 12:00 | 126 | 2015-06-10 08:00 | 2015-06-10 12:00 | 4h | 陈志伟; 林璐; 王珊珊; 王志鹏 | 16h |
| 128 | 41 | 项目管理第五阶段 | manual | 4h | 2015-06-11 08:00 | 2015-06-11 12:00 | 61 | 2015-06-11 08:00 | 2015-06-11 12:00 | 4h | 陈志伟 | 4h |
| 129 | 42 | 实验分析与总结 | manual | 32h | 2015-06-12 08:00 | 2015-06-17 17:00 |  | 2015-06-12 08:00 | 2015-06-17 17:00 | 32h | 陈志伟; 林璐; 王珊珊; 王志鹏 | 128h |
